# Delivery Schedule

How a schedule from MS Project changed from version to version. A marks actual dates.

## Version 1 (saved 2014-09-16)

Note of the change: huawei pits

| ID | WBS | Task | Duration | Start | Finish | Predecessors | Total float |
| --- | --- | --- | --- | --- | --- | --- | --- |
| 1 | 1 | **Huawei Pits** | 75d | 2014-10-06 | 2015-01-16 |  | 0d |
| 2 | 1.1 | **H.248 Binary** | 23d | 2014-10-06 | 2014-11-05 |  | 7d |
| 3 |  | Verify environment | 1d | 2014-10-06 | 2014-10-06 |  | 7d |
| 4 |  | Build | 15d | 2014-10-07 | 2014-10-27 | 3 | 7d |
| 5 |  | Test | 5d | 2014-10-28 | 2014-11-03 | 4 | 7d |
| 6 |  | Accept | 2d | 2014-11-04 | 2014-11-05 | 5 | 7d |
| 7 | 1.2 | **H.248 Text** | 22d | 2014-11-06 | 2014-12-05 | 2 | 7d |
| 8 |  | Verify environment | 1d | 2014-11-06 | 2014-11-06 |  | 7d |
| 9 |  | Build | 15d | 2014-11-07 | 2014-11-27 | 8 | 7d |
| 10 |  | Test | 5d | 2014-11-28 | 2014-12-04 | 9 | 7d |
| 11 |  | Accept | 1d | 2014-12-05 | 2014-12-05 | 10 | 7d |
| 12 | 1.3 | **M3UA** | 23d | 2014-12-08 | 2015-01-07 | 7 | 7d |
| 13 |  | Verify environment | 1d | 2014-12-08 | 2014-12-08 |  | 7d |
| 14 |  | Build | 15d | 2014-12-09 | 2014-12-29 | 13 | 7d |
| 15 |  | Test | 5d | 2014-12-30 | 2015-01-05 | 14 | 7d |
| 16 |  | Accept | 2d | 2015-01-06 | 2015-01-07 | 15 | 7d |
| 17 | 1.4 | **ERPS** | 18d | 2014-10-06 | 2014-10-29 |  | 3d |
| 18 |  | Verify environment | 1d | 2014-10-06 | 2014-10-06 |  | 3d |
| 19 |  | Build | 10d | 2014-10-07 | 2014-10-20 | 18 | 3d |
| 20 |  | Test | 5d | 2014-10-21 | 2014-10-27 | 19 | 3d |
| 21 |  | Accept | 2d | 2014-10-28 | 2014-10-29 | 20 | 3d |
| 22 | 1.5 | **M2PA** | 18d | 2014-10-30 | 2014-11-24 | 17 | 3d |
| 23 |  | Verify environment | 1d | 2014-10-30 | 2014-10-30 |  | 3d |
| 24 |  | Build | 10d | 2014-10-31 | 2014-11-13 | 23 | 3d |
| 25 |  | Test | 5d | 2014-11-14 | 2014-11-20 | 24 | 3d |
| 26 |  | Accept | 2d | 2014-11-21 | 2014-11-24 | 25 | 3d |
| 27 | 1.6 | **MGCP** | 18d | 2014-11-25 | 2014-12-18 | 22 | 3d |
| 28 |  | Verify environment | 1d | 2014-11-25 | 2014-11-25 |  | 3d |
| 29 |  | Build | 10d | 2014-11-26 | 2014-12-09 | 28 | 3d |
| 30 |  | Test | 5d | 2014-12-10 | 2014-12-16 | 29 | 3d |
| 31 |  | Accept | 2d | 2014-12-17 | 2014-12-18 | 30 | 3d |
| 32 | 1.7 | **MLDP** | 18d | 2014-12-19 | 2015-01-13 | 27 | 3d |
| 33 |  | Verify environment | 1d | 2014-12-19 | 2014-12-19 |  | 3d |
| 34 |  | Build | 10d | 2014-12-22 | 2015-01-02 | 33 | 3d |
| 35 |  | Test | 5d | 2015-01-05 | 2015-01-09 | 34 | 3d |
| 36 |  | Accept | 2d | 2015-01-12 | 2015-01-13 | 35 | 3d |
| 37 | 1.8 | **RTP/RTCP/SRTP** | 60d | 2014-10-27 | 2015-01-16 |  |  |
| 38 |  | Verify environment | 2d | 2014-10-27 | 2014-10-28 |  | 0d |
| 39 |  | Build | 45d | 2014-10-29 | 2014-12-30 | 38 | 0d |
| 40 |  | Test | 10d | 2014-12-31 | 2015-01-13 | 39 | 0d |
| 41 |  | Accept | 3d | 2015-01-14 | 2015-01-16 | 40 | 0d |
| 42 | 1.9 | **SIP-I/SIP-T** | 29d | 2014-10-27 | 2014-12-04 |  |  |
| 43 |  | Verify environment | 2d | 2014-10-27 | 2014-10-28 |  | 0d |
| 44 |  | Build | 20d | 2014-10-29 | 2014-11-25 | 43 | 0d |
| 45 |  | Test | 5d | 2014-11-26 | 2014-12-02 | 44 | 0d |
| 46 |  | Accept | 2d | 2014-12-03 | 2014-12-04 | 45 | 0d |
| 47 | 1.10 | **SFTP** | 29d | 2014-12-05 | 2015-01-14 | 42 | 2d |
| 48 |  | Verify environment | 2d | 2014-12-05 | 2014-12-08 |  | 2d |
| 49 |  | Build | 20d | 2014-12-09 | 2015-01-05 | 48 | 2d |
| 50 |  | Test | 5d | 2015-01-06 | 2015-01-12 | 49 | 2d |
| 51 |  | Accept | 2d | 2015-01-13 | 2015-01-14 | 50 | 2d |

## Version 2 (saved 2014-09-25)

Note of the change: updates to huawei scops, new captures, updated schedule

Last finish 2015-01-16 → 2015-01-14 (-2d).

Changed:

| ID | Task | Start | Finish | Duration | Total float | Predecessors | Other |
| --- | --- | --- | --- | --- | --- | --- | --- |
| 1 | **Huawei Pits** | 2014-10-06 → 2014-09-22 (-14d) | 2015-01-16 → 2015-01-14 (-2d) | 75d → 83d |  |  |  |
| 2 | **H.248 Binary** |  |  |  | 7d → 28d |  | resources Resource #1 → Mike |
| 7 | **H.248 Text** |  |  |  | 7d → 28d |  | resources Resource #1 → Mike |
| 12 | **M3UA** | 2014-12-08 → 2014-10-06 (-63d) | 2015-01-07 → 2014-11-05 (-63d) |  | 7d → 3d | 7 → none | resources Resource #1 → Resource #2 |
| 13 | Verify environment | 2014-12-08 → 2014-10-06 (-63d) | 2014-12-08 → 2014-10-06 (-63d) |  | 7d → 3d |  |  |
| 14 | Build | 2014-12-09 → 2014-10-07 (-63d) | 2014-12-29 → 2014-10-27 (-63d) |  | 7d → 3d |  |  |
| 15 | Test | 2014-12-30 → 2014-10-28 (-63d) | 2015-01-05 → 2014-11-03 (-63d) |  | 7d → 3d |  |  |
| 16 | Accept | 2015-01-06 → 2014-11-04 (-63d) | 2015-01-07 → 2014-11-05 (-63d) |  | 7d → 3d |  |  |
| 17 | **M2PA** | 2014-10-30 → 2014-11-06 (+7d) | 2014-11-24 → 2014-12-01 (+7d) |  |  | 32 → 12 |  |
| 18 | Verify environment | 2014-10-30 → 2014-11-06 (+7d) | 2014-10-30 → 2014-11-06 (+7d) |  |  |  |  |
| 19 | Build | 2014-10-31 → 2014-11-07 (+7d) | 2014-11-13 → 2014-11-20 (+7d) |  |  |  |  |
| 20 | Test | 2014-11-14 → 2014-11-21 (+7d) | 2014-11-20 → 2014-11-27 (+7d) |  |  |  |  |
| 21 | Accept | 2014-11-21 → 2014-11-28 (+7d) | 2014-11-24 → 2014-12-01 (+7d) |  |  |  |  |
| 22 | **SIP-I/SIP-T** | 2014-10-27 → 2014-12-02 (+36d) | 2014-12-04 → 2015-01-09 (+36d) |  | none → 3d | none → 17 | resources Resource #4 → Resource #2 |
| 23 | Verify environment | 2014-10-27 → 2014-12-02 (+36d) | 2014-10-28 → 2014-12-03 (+36d) |  | 0d → 3d |  |  |
| 24 | Build | 2014-10-29 → 2014-12-04 (+36d) | 2014-11-25 → 2014-12-31 (+36d) |  | 0d → 3d |  |  |
| 25 | Test | 2014-11-26 → 2015-01-01 (+36d) | 2014-12-02 → 2015-01-07 (+36d) |  | 0d → 3d |  |  |
| 26 | Accept | 2014-12-03 → 2015-01-08 (+36d) | 2014-12-04 → 2015-01-09 (+36d) |  | 0d → 3d |  |  |
| 27 | **SFTP** | 2014-12-05 → 2014-09-22 (-74d) | 2015-01-14 → 2014-10-30 (-76d) |  | 2d → none | 22 → none | resources Resource #4 → Kaleen |
| 28 | Verify environment | 2014-12-05 → 2014-09-22 (-74d) | 2014-12-08 → 2014-09-23 (-76d) |  | 2d → 0d |  |  |
| 29 | Build | 2014-12-09 → 2014-09-24 (-76d) | 2015-01-05 → 2014-10-21 (-76d) |  | 2d → 0d |  |  |
| 30 | Test | 2015-01-06 → 2014-10-22 (-76d) | 2015-01-12 → 2014-10-28 (-76d) |  | 2d → 0d |  |  |
| 31 | Accept | 2015-01-13 → 2014-10-29 (-76d) | 2015-01-14 → 2014-10-30 (-76d) |  | 2d → 0d |  |  |
| 32 | **ERPS** | 2014-10-06 → 2014-10-31 (+25d) | 2014-10-29 → 2014-11-25 (+27d) |  | 3d → 0d | none → 27 | resources Resource #2 → Kaleen |
| 33 | Verify environment | 2014-10-06 → 2014-10-31 (+25d) | 2014-10-06 → 2014-10-31 (+25d) |  | 3d → 0d |  |  |
| 34 | Build | 2014-10-07 → 2014-11-03 (+27d) | 2014-10-20 → 2014-11-14 (+25d) |  | 3d → 0d |  |  |
| 35 | Test | 2014-10-21 → 2014-11-17 (+27d) | 2014-10-27 → 2014-11-21 (+25d) |  | 3d → 0d |  |  |
| 36 | Accept | 2014-10-28 → 2014-11-24 (+27d) | 2014-10-29 → 2014-11-25 (+27d) |  | 3d → 0d |  |  |
| 37 | **MLDP** | 2014-12-19 → 2014-11-26 (-23d) | 2015-01-13 → 2014-12-19 (-25d) |  | 3d → 0d | 42 → 32 | resources Resource #2 → Kaleen |
| 38 | Verify environment | 2014-12-19 → 2014-11-26 (-23d) | 2014-12-19 → 2014-11-26 (-23d) |  | 3d → 0d |  |  |
| 39 | Build | 2014-12-22 → 2014-11-27 (-25d) | 2015-01-02 → 2014-12-10 (-23d) |  | 3d → 0d |  |  |
| 40 | Test | 2015-01-05 → 2014-12-11 (-25d) | 2015-01-09 → 2014-12-17 (-23d) |  | 3d → 0d |  |  |
| 41 | Accept | 2015-01-12 → 2014-12-18 (-25d) | 2015-01-13 → 2014-12-19 (-25d) |  | 3d → 0d |  |  |
| 42 | **MGCP** | 2014-11-25 → 2014-12-22 (+27d) | 2014-12-18 → 2015-01-14 (+27d) |  | 3d → 0d | 17 → 37 | resources Resource #2 → Kaleen |
| 43 | Verify environment | 2014-11-25 → 2014-12-22 (+27d) | 2014-11-25 → 2014-12-22 (+27d) |  | 3d → 0d |  |  |
| 44 | Build | 2014-11-26 → 2014-12-23 (+27d) | 2014-12-09 → 2015-01-05 (+27d) |  | 3d → 0d |  |  |
| 45 | Test | 2014-12-10 → 2015-01-06 (+27d) | 2014-12-16 → 2015-01-12 (+27d) |  | 3d → 0d |  |  |
| 46 | Accept | 2014-12-17 → 2015-01-13 (+27d) | 2014-12-18 → 2015-01-14 (+27d) |  | 3d → 0d |  |  |
| 47 | **RTP/RTCP/SRTP** | 2014-10-27 → 2014-09-29 (-28d) | 2015-01-16 → 2014-12-19 (-28d) |  |  |  | resources Resource #3 → Resource #1 |
| 48 | Verify environment | 2014-10-27 → 2014-09-29 (-28d) | 2014-10-28 → 2014-09-30 (-28d) |  |  |  |  |
| 49 | Build | 2014-10-29 → 2014-10-01 (-28d) | 2014-12-30 → 2014-12-02 (-28d) |  |  |  |  |
| 50 | Test | 2014-12-31 → 2014-12-03 (-28d) | 2015-01-13 → 2014-12-16 (-28d) |  |  |  |  |
| 51 | Accept | 2015-01-14 → 2014-12-17 (-28d) | 2015-01-16 → 2014-12-19 (-28d) |  |  |  |  |

## Version 3 (saved 2014-09-30)

Note of the change: updated huawei pit stuffs

Last finish stays 2015-01-14.

Changed:

| ID | Task | Other |
| --- | --- | --- |
| 12 | **M3UA** | resources Resource #2 → Jake |
| 17 | **M2PA** | resources Resource #2 → Jake |
| 22 | **SIP-I/SIP-T** | resources Resource #2 → Jake |

## Version 4 (saved 2014-10-02)

Note of the change: Squashed 'pits/' changes from 914062d..a194fc8

Last finish stays 2015-01-14.

Changed:

| ID | Task | Other |
| --- | --- | --- |
| 12 | **M3UA** | resources Jake → none |
| 17 | **M2PA** | resources Jake → none |
| 22 | **SIP-I/SIP-T** | resources Jake → Resource #1 |
| 47 | **RTP/RTCP/SRTP** | resources Resource #1 → Jake |
